# AF-Twin Devops

Schedule from GanttProject, 2018-08-13 to 2018-11-23.
ESCSA
This is the project planning for the software architecture, design and development activities of AF-Twin platform.

## Calendars

- Project calendar: Mon-Fri working; Sat-Sun off.

## Resources

| Resource | Group |
| --- | --- |
| Murat | architect |
| Servan |  |
| Gustavo |  |
| Julien | data analyst |
| Eugene | data analyst |

## Schedule

| ID | WBS | Task | Duration | Start | Finish | Predecessors | Resources |
| --- | --- | --- | --- | --- | --- | --- | --- |
| 1 | 1 | Admin feature to see list of AF-Twin users | 5d | 2018-08-27 | 2018-08-31 |  | Gustavo |
| 2 | 2 | Bug-10: Health monitoring UI freezes at application startup | 5d | 2018-09-03 | 2018-09-07 |  | Murat |
| 3 | 3 | Add different ISAMI option for stress rotation | 10d | 2018-09-03 | 2018-09-14 |  | Servan |
| 4 | 4 | Improving query performance by applying batch process | 5d | 2018-09-17 | 2018-09-21 |  | Gustavo |
| 5 | 5 | **Pilot Point Database Enhancement** | 0d | 2018-08-13 | 2018-08-13 |  |  |
| 6 | 5.1 | SQL Statement Creation | 5d | 2018-08-13 | 2018-08-17 |  | Servan |
| 7 | 5.2 | PP Data Migration | 10d | 2018-08-20 | 2018-08-31 | 6 | Servan |
| 8 | 5.3 | Update Data Server codebase | 10d | 2018-09-03 | 2018-09-14 | 7 | Gustavo |
| 9 | 5.4 | Update Data Analyst codebase | 10d | 2018-09-17 | 2018-09-28 | 8 | Murat |
| 10 | 6 | Permissions for A/C program, component, section | 10d | 2018-09-17 | 2018-09-28 |  | Servan |
| 11 | 7 | Server Stop/Restart Implementation | 5d | 2018-10-01 | 2018-10-05 |  | Servan |
| 12 | 8 | Batch Analysis Mode | 10d | 2018-09-24 | 2018-10-05 |  | Gustavo |
| 13 | 9 | **Plugin System Design & Development** | 0d | 2018-08-13 | 2018-08-13 |  |  |
| 14 | 9.1 | Standardize Python executable creation process for all target OS (Plugins) | 10d | 2018-08-13 | 2018-08-24 |  | Gustavo |
| 15 | 9.2 | Enhance Java API for plugins (Plugins) | 15d | 2018-08-13 | 2018-08-31 |  | Murat |
| 16 | 9.3 | Standardize Perl executable creation process for all target OS (Plugins) | 10d | 2018-08-20 | 2018-08-31 |  | Eugene |
| 17 | 9.4 | Standardize FORTRAN executable creation process for all target OS (Plugins) | 10d | 2018-10-01 | 2018-10-12 |  | Murat |
| 18 | 10 | Server Announcement UI | 5d | 2018-10-08 | 2018-10-12 |  | Servan |
| 19 | 11 | Migration to GISEH 2.0 & ISAMI 10 | 10d | 2018-10-08 | 2018-10-19 |  | Gustavo |
| 20 | 12 | Streamlining ISAMI material database to AF-Twin central database | 10d | 2018-10-15 | 2018-10-26 |  | Servan |
| 21 | 13 | Keeping only Most Significant 5 TFs in stress sequence | 10d | 2018-10-15 | 2018-10-26 |  | Murat |
| 22 | 14 | Replace Apache database engine with H2 | 10d | 2018-10-22 | 2018-11-02 |  | Gustavo |
| 23 | 15 | PC Services Deployment | 10d | 2018-10-29 | 2018-11-09 |  | Murat |
| 24 | 16 | Persistence of Analysis Parameters | 5d | 2018-11-05 | 2018-11-09 |  | Gustavo |
| 25 | 17 | Notification Center | 10d | 2018-10-29 | 2018-11-09 |  | Servan |
| 26 | 18 | Automated Equivalent Stress Analysis | 10d | 2018-11-12 | 2018-11-23 |  | Murat |
| 27 | 19 | 3D Stress Mapping Visualization | 10d | 2018-11-12 | 2018-11-23 |  | Servan |
| 28 | 20 | Store Pilot Point Charts with Attributes | 10d | 2018-11-12 | 2018-11-23 |  | Gustavo |

Notes:
- 1: Task for seeing a list of all users in the central database. The list should give basic information on users (such as names, departments, emails etc.). Menu button should be added to Admins menu under user management.
- 2: Health monitoring UI freezes at application startup causing the whole app to crash. / * Doesn't always occur / * Diagnose problem by print statements to understand where exactly problem is originated from.
- 3: Additional stress rotation options to be implemented for 2D stress state. Following options shall be considered: / * Resolved fatigue stress (currently implemented) / * Equivalent strain based resolved fatigue stress / * Resolved 2D fatigue stress for specified angle. / **Note 1:** In order to find the affected controller, process and task classes, do reference search in IDE for 'StressComponent.ROTATED'. / **Note 2:** The pilot point table in the local database will need to be updated to store the resolution method. / **Note 3:** Resolution method will have to be propagated to central database storage and consequently will affect pilot point upload/download process (data server tasks and client UI).
- 4: This is a performance improvement. Local database query performance should be improved by applying batch process. Task includes following steps: / * Determine queries that have significant potential for performance improvement / * Run queries (or tasks including these queries) and note runtimes / * Implement batch process and compare runtimes.
- 5: Pilot point tables in central database need to be renewed with extended attribute information. This task includes the following steps: / * Pilot point storage design can be accessed from [here](https://gheprivate.intra.corp/Digital-Airframe-Solutions/AF-Twin-Data-Analyst/blob/master/docs/PP_Storage_Design.xlsx) / * Create an SQL file containing create table and index statements / * Create tables in validation database / * Create scripts to migrate existing PPs to new tables - test i script on validation database / * Update queries (tasks) in data server / * Update network messages and network data objects in data server / * Update client tasks (search pilot point, download etc.) / * Update client UI for pilot points
- 6: This is a subtask of the task #3. This task includes the following steps: / * Create an SQL file containing create table and index statements / * Create tables in validation database / Note 1: Pilot point storage design can be accessed from [here](https://gheprivate.intra.corp/Digital-Airframe-Solutions/AF-Twin-Data-Analyst/blob/master/docs/PP_Storage_Design.xlsx) / Note 2: Please have a look at the file [resetDatabase.sql](https://gheprivate.intra.corp/Digital-Airframe-Solutions/AF-Twin-Server-Utilities/blob/master/sql/resetDatabase.sql) in AF-Twin-Server-Utilities project under sql folder. Would be best if you use same format as that file (for both creating and indexing statements)
- 7: This is a subtask of the task #3. This task includes the following steps: / * Create scripts to migrate existing PPs from previous tables to new tables / * Upload some sample PP data into validation database (to previous tables) / * Test developed scripts to migrate the uploaded data on validation database / Note 1: Pilot point storage design can be accessed from [here](https://gheprivate.intra.corp/Digital-Airframe-Solutions/AF-Twin-Data-Analyst/blob/master/docs/PP_Storage_Design.xlsx)
- 8: This is a subtask of the task #3. This task includes the following steps: / * Update queries (pilot point table related) in data server / * Update network messages and network data objects related to pilot point data in data server / Note 1: Pilot point storage design can be accessed from [here](https://gheprivate.intra.corp/Digital-Airframe-Solutions/AF-Twin-Data-Analyst/blob/master/docs/PP_Storage_Design.xlsx)
- 9: This is a subtask of the task muratartim/EquinoxDataServer#3. This task includes the following steps: / * Update central database pilot point related client tasks (search pilot point, download etc.) / * Update client UI for pilot points / Note 1: Pilot point storage design can be accessed from [here](https://github.com/muratartim/Equinox/blob/master/docs/pilot_point_storage_design/PP_Storage_Design.xlsx)
- 10: User permissions should be extended to include A/C program, section and component. / * User will only have access to specific A/C program, section data in the central database / * Basic and Advanced Search or download tasks (for spectra, pilot points, loadcase factors etc.) on data server will need to be updated accordingly. / * Either the search query needs to be modified to include only permitted A/C programs and sections / * Or the search results can be filtered to exclude not permitted results / * [Permission](https://gheprivate.intra.corp/Digital-Airframe-Solutions/AF-Twin-Server-Utilities/blob/master/src/equinox/serverUtilities/Permission.java) class in server utilities needs to be updated. See suggestions below. / **Suggestions:** / Permission class is an enumeration therefore it is for static permissions. For this task we need to implement dynamic permissions. / 1. Create 2 classes called AircraftProgramPermission and AircraftSectionPermission / 2. Add a final String-array field called programs (for AircraftProgramPermission) / 3. Create a constructor with variable String parameters (i.e. String... programs) / This class should then be used to check permissions in the above mentioned search tasks.
- 11: Server stop/restart tasks should be implemented. / * Network messages / * Server & lobby implementations / * Task implementations / * Client UI implementations
- 12: Provide an overview of all analysis parameters to allow the user to quickly check and set up all parameters needed for the analysis / (Excel file? ISAMI Template?)
- 14: In order to enable external plugins to interact with AF-Twin, we have to standardize Python executable creation process. This task includes: / * Investigate and find software (preferably freeware) that compiles Python source codes into executables. / * Write sample Python applications and convert them into executables using the software. / * Add external libraries into sample applications and test converting into executables. / * Generate executables for both Windows and Linux. / * Once successful, write cookbook including step-by-step procedure to generate executables, limitations etc.
- 15: The existing Java API for AF-Twin plugins should be extended to include services such as: / * Local database connectivity / * Central database connectivity / * Fatigue & propagation equivalent stress analysis task creation / * Stress sequence generation task creation / * Plotting capabilities
- 16: In order to enable external plugins to interact with AF-Twin, we have to standardize Perl executable creation process. This task includes: / * Investigate and find software (preferably freeware) that compiles Perl source codes into executables. / * Write sample Perl applications and convert them into executables using the software. / * Add external libraries into sample applications and test converting into executables. / * Generate executables for both Windows and Linux. / * Once successful, write cookbook including step-by-step procedure to generate executables, limitations etc.
- 17: In order to enable external plugins to interact with AF-Twin, we have to standardize Fortran executable creation process. This task includes: / * Investigate and find software (preferably freeware) that compiles Fortran source codes into executables. / * Write sample Fortran applications and convert them into executables using the software. / * Add external libraries into sample applications and test converting into executables. / * Generate executables for both Windows and Linux. / * Once successful, write cookbook including step-by-step procedure to generate executables, limitations etc.
- 18: A server announcement panel should be implemented and connected to a menu item in Administrator menu.
- 19: Analysis server should be migrated to GISEH 2.0. This task includes following steps: / * Investigate GISEH 2.0 access and environment / * Determine differences to GISEH 1.0 / * Investigate ISAMI access in GISEH 2.0 / * Investigate ISAMI 10 / * Shift JDK from 1.8 to 10
- 20: Currently, ISAMI fatigue materials are imported into AF-Twin central database via scripts in a half-automated way. One has to manually export ISAMI materials and then execute the scripts to create material-import-data for AF-Twin. / This process needs to be replaced with **direct access to ISAMI material database**.
- 22: This is a performance improvement. H2 database engine is known to be far faster than Apache Derby. / * How to import H2 into Eclipse / * Is there SQL accent differences between H2 and Derby / * How to establish connection to H2 database via Java code
- 26: Analysis service should have the capabilitiy to carry out automated equivalent stress analyses at non-prime times. This process will include: / * Check the clculation input table for completeness, / * Perform requested analyses on multiple nodes / * Store output results
